# Proyecto Graduación

How a schedule from MS Project changed from version to version. A marks actual dates.

## Version 1 (data date 2018-06-20, saved 2018-08-08, file Proyecto Graduación Steve.mpp)

Note of the change: Diseño prueba de concepto tolva

| ID | WBS | Task | Duration | Start | Finish | Predecessors | Total float | Constraint |
| --- | --- | --- | --- | --- | --- | --- | --- | --- |
| 1 |  | Síntesis de requerimientos | 2d | 2018-07-23 | 2018-07-24 |  | 0d | must start on 2018-07-23 |
| 2 | 2 | **Objetivo 1** | 43.25d | 2018-07-25 | 2018-09-24 |  | 3d |  |
| 3 |  | Lluvia de ideas | 2d | 2018-07-25 | 2018-07-26 | 1 | 21d | start no earlier than 2018-07-25 |
| 4 |  | Pruebas de concepto | 5d | 2018-07-26 | 2018-08-01 |  | 2d | start no earlier than 2018-07-26 |
| 5 |  | Compras | 330h | 2018-08-06 | 2018-08-20 | 4 | 0d | must start on 2018-08-06 |
| 6 |  | Especificaciones | 2d | 2018-08-02 | 2018-08-03 | 4 | 43.75d |  |
| 7 |  | Diseño de esclusas | 10d | 2018-08-27 | 2018-09-07 | 5 | 18.75d | start no earlier than 2018-08-27 |
| 8 |  | Manufactura del diseño | 10d | 2018-09-10 | 2018-09-24 | 7, 6 | 18.75d | start no earlier than 2018-08-23 |
| 9 | 3 | **Objetivo 2** | 39d | 2018-08-13 | 2018-10-04 |  | 4d |  |
| 10 |  | Diseño de transportadores | 10d | 2018-08-13 | 2018-08-24 | 3 | 10d | start no earlier than 2018-08-13 |
| 11 |  | Compras | 336h | 2018-08-17 | 2018-08-31 |  | 0d | must start on 2018-08-17 |
| 12 |  | Manufactura del diseño | 10d | 2018-09-10 | 2018-09-21 | 11, 10 | 0d | start no earlier than 2018-09-08 |
| 13 |  | Verificación de los componentes | 2d | 2018-09-24 | 2018-09-25 | 12 | 0d |  |
| 14 |  | Integración de los componentes | 5d | 2018-09-26 | 2018-10-02 | 13, 11 | 0d | start no earlier than 2018-09-10 |
| 15 |  | Verificar el subsistema | 2d | 2018-10-03 | 2018-10-04 | 14 | 10d | start no earlier than 2018-09-14 |
| 16 | 4 | **Objetivo 3** | 45d | 2018-08-17 | 2018-10-18 |  | 0d |  |
| 17 |  | Compras | 80h | 2018-08-17 | 2018-08-31 |  | 0d | must start on 2018-08-17 |
| 18 |  | Programar interface | 2d | 2018-10-03 | 2018-10-04 | 17, 14 | 0d | start no earlier than 2018-09-28 |
| 19 |  | Implementar circuitos, PCB y caja de protección | 3d | 2018-10-05 | 2018-10-09 | 18 | 0d |  |
| 20 |  | Generar códigos electrónicos | 3d | 2018-10-10 | 2018-10-12 | 19 | 0d |  |
| 21 |  | Programar secuencia de movimientos | 4d | 2018-10-15 | 2018-10-18 | 20 | 0d |  |
| 22 | 5 | **Objetivo 4** | 16d | 2018-10-19 | 2018-11-09 |  | 0d |  |
| 23 |  | Verificar funcionamiento general del sistema | 4d | 2018-10-19 | 2018-10-24 | 8, 15, 21 | 0d |  |
| 24 |  | Diseñar el experimento estadístico | 4d | 2018-10-25 | 2018-10-30 | 23 | 0d |  |
| 25 |  | Ejecutar el experimento | 4d | 2018-10-31 | 2018-11-05 | 24 | 0d |  |
| 26 |  | Analizar datos obtenidos | 4d | 2018-11-06 | 2018-11-09 | 25 | 0d |  |
| 27 | 6 | **Elaboración del informe final** | 80d | 2018-07-23 | 2018-11-09 |  |  |  |
| 28 |  | Marco teórico | 8.75d? | 2018-08-08 | 2018-08-20 |  | 24.25d | finish no earlier than 2018-08-20 |
| 29 |  | Solución propuesta | 24.75d? | 2018-08-20 | 2018-09-24 | 28 | 24.25d |  |
| 30 |  | Resultados | 7.5d? | 2018-09-24 | 2018-10-03 | 29 | 24.25d |  |
| 31 |  | Análisis | 1.75d? | 2018-10-04 | 2018-10-05 | 30 | 24.25d |  |
| 32 |  | Revisión de documento general | 1d? | 2018-10-05 | 2018-10-08 | 31 | 24.25d |  |

## Version 2 (data date 2018-06-20, saved 2018-08-16, file Proyecto Graduación Steve.mpp)

Last finish stays 2018-11-09. Complete tasks 0 → 4.

Changed:

| ID | Task | Start | Finish | Complete | Total float |
| --- | --- | --- | --- | --- | --- |
| 1 | Síntesis de requerimientos | 2018-07-23 A | 2018-07-24 A | 0% → 100% | 0d → none |
| 2 | **Objetivo 1** | 2018-07-25 A |  | 0% → 46% | 3d → 18.75d |
| 3 | Lluvia de ideas | 2018-07-25 A | 2018-07-26 A | 0% → 100% | 21d → none |
| 4 | Pruebas de concepto | 2018-07-26 A | 2018-08-01 A | 0% → 100% | 2d → none |
| 5 | Compras | 2018-08-06 A |  | 0% → 50% |  |
| 6 | Especificaciones | 2018-08-02 A | 2018-08-03 A | 0% → 100% | 43.75d → none |
| 7 | Diseño de esclusas | 2018-08-27 A |  | 0% → 25% |  |
| 9 | **Objetivo 2** | 2018-08-13 A |  | 0% → 4% | 4d → 10d |
| 10 | Diseño de transportadores | 2018-08-13 A |  | 0% → 25% |  |

## Version 3 (data date 2018-06-20, saved 2018-08-20, file Proyecto Graduación Steve.mpp)

Last finish stays 2018-11-09.

Changed:

| ID | Task | Complete |
| --- | --- | --- |
| 2 | **Objetivo 1** | 46% → 64% |
| 5 | Compras | 50% → 75% |
| 7 | Diseño de esclusas | 25% → 50% |
