# Proyecto Graduación

How a schedule from MS Project changed from version to version. A marks actual dates.

## Version 1 (data date 2018-06-20, saved 2018-06-20)

Note of the change: Anteproyecto V3

| ID | WBS | Task | Duration | Start | Finish | Predecessors | Total float | Constraint |
| --- | --- | --- | --- | --- | --- | --- | --- | --- |
| 1 |  | Síntesis de requerimientos | 0.5d | 2018-07-23 | 2018-07-23 |  | 0d | must start on 2018-07-23 |
| 2 | 2 | **Objetivo 1** | 32.5d | 2018-07-23 | 2018-09-05 |  | 0d |  |
| 3 |  | Lluvia de ideas sobre el diseño | 0.5d | 2018-07-23 | 2018-07-23 | 1 | 0d | must start on 2018-07-23 |
| 4 |  | Obtener una lista de especificaciones | 0.5d | 2018-07-24 | 2018-07-24 | 3 | 0d | must finish on 2018-07-24 |
| 5 |  | Efectuar las pruebas de concepto | 4.5d | 2018-07-25 | 2018-07-31 | 4 | 0d | must start on 2018-07-25 |
| 6 |  | Comprar los componentes | 336h | 2018-08-06 | 2018-08-20 | 5 | 0d | must start on 2018-08-06 |
| 7 |  | Elaborar el diseño de las esclusas | 7d | 2018-07-31 | 2018-08-09 | 5 | 40.5d |  |
| 8 |  | Manufacturar el diseño | 8d | 2018-08-21 | 2018-08-30 | 6 | 25d | start no earlier than 2018-08-21 |
| 9 |  | Generar el código para la comunicación | 4d | 2018-08-31 | 2018-09-05 | 8, 7 | 25d | start no earlier than 2018-08-31 |
| 10 | 3 | **Objetivo 2** | 28d? | 2018-08-09 | 2018-09-17 |  | 6d |  |
| 11 |  | Generar el diseño de las tolvas | 7d | 2018-08-09 | 2018-08-17 | 3 | 27d | start no earlier than 2018-08-09 |
| 12 |  | Comprar los componentes | 336h | 2018-08-17 | 2018-08-31 |  | 0d | must start on 2018-08-17 |
| 13 |  | Manufaturar el diseño de las tolvas y otros | 4d | 2018-09-03 | 2018-09-06 | 12, 11 | 17d | start no earlier than 2018-09-03 |
| 14 |  | Verificar el funcionamiento de todos los componentes | 1d? | 2018-09-07 | 2018-09-07 | 13 | 17d |  |
| 15 |  | Ensamblar las componentes | 4d | 2018-09-10 | 2018-09-13 | 14, 12 | 17d | start no earlier than 2018-09-10 |
| 16 |  | Verificar el funcionamiento del subsistema | 2d | 2018-09-14 | 2018-09-17 | 15 | 17d | start no earlier than 2018-09-14 |
| 17 | 4 | **Objetivo 3** | 39d | 2018-08-17 | 2018-10-10 |  | 0d |  |
| 18 |  | Comprar los componentes necesarios | 80h | 2018-08-17 | 2018-08-31 |  | 0d | must start on 2018-08-17 |
| 19 |  | Programar el funcionamiento de la botonera | 2d | 2018-09-18 | 2018-09-19 | 18 | 0d | start no earlier than 2018-09-18 |
| 20 |  | Obtener el modelo del transporte de masas. | 1d | 2018-09-20 | 2018-09-20 | 19 | 0d |  |
| 21 |  | Diseñar el controlador | 1d | 2018-09-21 | 2018-09-21 | 20 | 0d |  |
| 22 |  | Programar la interfaz sobre la pantalla LCD | 2d | 2018-09-24 | 2018-09-25 | 21 | 0d |  |
| 23 |  | Implementar el conrolador en la Raspberry | 3d | 2018-09-26 | 2018-09-28 | 22 | 0d |  |
| 24 |  | Construir los circuitos impresos para los componentes | 4d | 2018-10-01 | 2018-10-04 | 23 | 0d | start no earlier than 2018-09-30 |
| 25 |  | Construir la caja de protección | 4d | 2018-10-05 | 2018-10-10 | 24 | 0d |  |
| 26 | 5 | **Objetivo 4** | 20d | 2018-10-11 | 2018-11-07 |  | 0d |  |
| 27 |  | Validar el funcionamiento de cada uno de los subsistemas | 3d | 2018-10-11 | 2018-10-15 | 9, 16, 25 | 0d |  |
| 28 |  | Diseñar el experimento estadístico | 3d | 2018-10-16 | 2018-10-18 | 27 | 0d |  |
| 29 |  | Ejecutar el experimento diseñado | 3d | 2018-10-19 | 2018-10-23 | 28 | 0d |  |
| 30 |  | Analizar los datos obtenidos | 4d | 2018-10-24 | 2018-10-29 | 29 | 0d |  |
| 31 |  | Formulación del informe final del proyecto | 5d | 2018-10-30 | 2018-11-05 | 30 | 0d |  |
| 32 |  | Preparación para la defensa del proyecto | 2d | 2018-11-06 | 2018-11-07 | 31 | 0d |  |

## Version 2 (data date 2018-06-20, saved 2018-06-26)

Note of the change: Version 3

Last finish 2018-11-07 → 2018-10-29 (-9d).

Removed: 31 Formulación del informe final del proyecto; 32 Preparación para la defensa del proyecto

Changed:

| ID | Task | Finish | Duration |
| --- | --- | --- | --- |
| 26 | **Objetivo 4** | 2018-11-07 → 2018-10-29 (-9d) | 20d → 13d |

## Version 3 (data date 2018-06-20, saved 2018-06-26)

Note of the change: Proyecto v3

Last finish stays 2018-10-29.

Changed:

| ID | Task | Finish | Duration | Total float | Other |
| --- | --- | --- | --- | --- | --- |
| 2 | **Objetivo 1** | 2018-09-05 → 2018-09-12 (+7d) | 32.5d → 37.5d |  |  |
| 9 | Generar el código para la comunicación | 2018-09-05 → 2018-09-12 (+7d) | 4d → 8.75d | 25d → 20d | constraint start no earlier than 2018-08-31 → start no earlier than 2018-07-26 |

## Version 4 (data date 2018-06-20, saved 2018-07-19)

Note of the change: Vectores

Last finish 2018-10-29 → 2018-11-09 (+11d).

Added:

| ID | Task | Duration | Start | Finish | Constraint |
| --- | --- | --- | --- | --- | --- |
| 31 | Elaboración del informe final | 80d | 2018-07-23 | 2018-11-09 | start no earlier than 2018-07-22 |

Changed:

| ID | Task | Start | Finish | Duration | Total float | Other |
| --- | --- | --- | --- | --- | --- | --- |
| 1 | Síntesis de requerimientos |  |  | 0.5d → 1d |  |  |
| 2 | **Objetivo 1** | 2018-07-23 → 2018-07-24 (+1d) | 2018-09-12 → 2018-09-20 (+8d) | 37.5d → 42.25d |  |  |
| 3 | Lluvia de ideas sobre el diseño | 2018-07-23 → 2018-07-24 (+1d) | 2018-07-23 → 2018-07-24 (+1d) | 0.5d → 1d |  | constraint must start on 2018-07-23 → must start on 2018-07-24 |
| 4 | Obtener una lista de especificaciones | 2018-07-24 → 2018-07-25 (+1d) | 2018-07-24 → 2018-07-25 (+1d) | 0.5d → 1d |  | constraint must finish on 2018-07-24 → must start on 2018-07-25 |
| 5 | Efectuar las pruebas de concepto | 2018-07-25 → 2018-07-26 (+1d) | 2018-07-31 → 2018-08-01 (+1d) | 4.5d → 5d | 0d → 2d | constraint must start on 2018-07-25 → start no earlier than 2018-07-26 |
| 6 | Comprar los componentes |  |  | 336h → 330h |  |  |
| 7 | Elaborar el diseño de las esclusas | 2018-07-31 → 2018-08-02 (+2d) | 2018-08-09 → 2018-08-10 (+1d) |  | 15.5d → 41.75d |  |
| 8 | Manufacturar el diseño | 2018-08-21 → 2018-08-27 (+6d) | 2018-08-30 → 2018-09-06 (+7d) | 8d → 9d | 20d → 22.75d | constraint start no earlier than 2018-08-21 → start no earlier than 2018-08-27 |
| 9 | Generar el código para la comunicación | 2018-08-31 → 2018-09-07 (+7d) | 2018-09-12 → 2018-09-20 (+8d) | 8.75d → 9d | 20d → 22.75d | constraint start no earlier than 2018-07-26 → start no earlier than 2018-08-23 |
| 10 | **Objetivo 2** | 2018-08-09 → 2018-08-13 (+4d) | 2018-09-17 → 2018-09-27 (+10d) | 28d? → 34d | 6d → 4d |  |
| 11 | Generar el diseño de las tolvas | 2018-08-09 → 2018-08-13 (+4d) | 2018-08-17 → 2018-08-23 (+6d) | 7d → 9d |  | constraint start no earlier than 2018-08-09 → start no earlier than 2018-08-13 |
| 13 | Manufaturar el diseño de las tolvas y otros | 2018-09-03 → 2018-09-10 (+7d) | 2018-09-06 → 2018-09-17 (+11d) | 4d → 6d | 18d → 17d | constraint start no earlier than 2018-09-03 → start no earlier than 2018-09-08 |
| 14 | Verificar el funcionamiento de todos los componentes | 2018-09-07 → 2018-09-18 (+11d) | 2018-09-07 → 2018-09-18 (+11d) | 1d? → 1d | 18d → 17d |  |
| 15 | Ensamblar las componentes | 2018-09-10 → 2018-09-19 (+9d) | 2018-09-13 → 2018-09-25 (+12d) | 4d → 5d | 18d → 17d |  |
| 16 | Verificar el funcionamiento del subsistema | 2018-09-14 → 2018-09-26 (+12d) | 2018-09-17 → 2018-09-27 (+10d) |  | 18d → 17d |  |
| 17 | **Objetivo 3** |  | 2018-10-10 → 2018-10-22 (+12d) | 39d → 47d |  |  |
| 18 | Comprar los componentes |  |  |  |  | was named Comprar los componentes necesarios |
| 19 | Programar el funcionamiento de la botonera | 2018-09-18 → 2018-09-28 (+10d) | 2018-09-19 → 2018-10-01 (+12d) |  |  | constraint start no earlier than 2018-09-18 → start no earlier than 2018-09-28 |
| 20 | Obtener el modelo del transporte de masas. | 2018-09-20 → 2018-10-02 (+12d) | 2018-09-20 → 2018-10-02 (+12d) |  |  |  |
| 21 | Diseñar el controlador | 2018-09-21 → 2018-10-03 (+12d) | 2018-09-21 → 2018-10-03 (+12d) |  |  |  |
| 22 | Programar la interfaz sobre la pantalla LCD | 2018-09-24 → 2018-10-04 (+10d) | 2018-09-25 → 2018-10-05 (+10d) |  |  |  |
| 23 | Implementar el conrolador en la Raspberry | 2018-09-26 → 2018-10-08 (+12d) | 2018-09-28 → 2018-10-10 (+12d) |  |  |  |
| 24 | Construir los circuitos impresos para los componentes | 2018-10-01 → 2018-10-11 (+10d) | 2018-10-04 → 2018-10-16 (+12d) |  |  |  |
| 25 | Construir la caja de protección | 2018-10-05 → 2018-10-17 (+12d) | 2018-10-10 → 2018-10-22 (+12d) |  |  |  |
| 26 | **Objetivo 4** | 2018-10-11 → 2018-07-23 (-80d) | 2018-10-29 → 2018-11-09 (+11d) | 13d → 80d |  |  |
| 27 | Validar el funcionamiento de cada uno de los subsistemas | 2018-10-11 → 2018-10-23 (+12d) | 2018-10-15 → 2018-10-25 (+10d) |  |  |  |
| 28 | Diseñar el experimento estadístico | 2018-10-16 → 2018-10-26 (+10d) | 2018-10-18 → 2018-10-31 (+13d) | 3d → 4d |  |  |
| 29 | Ejecutar el experimento diseñado | 2018-10-19 → 2018-11-01 (+13d) | 2018-10-23 → 2018-11-05 (+13d) |  |  |  |
| 30 | Analizar los datos obtenidos | 2018-10-24 → 2018-11-06 (+13d) | 2018-10-29 → 2018-11-09 (+11d) |  |  |  |

## Version 5 (data date 2018-06-20, saved 2018-08-07)

Note of the change: Cambios se me olvido la llave maya

Last finish stays 2018-11-09.

Removed: 4 Obtener una lista de especificaciones; 23 Implementar el conrolador en la Raspberry; 24 Construir los circuitos impresos para los componentes; 25 Construir la caja de protección

Changed:

| ID | Task | Start | Finish | Duration | Total float | Predecessors | Other |
| --- | --- | --- | --- | --- | --- | --- | --- |
| 1 | Síntesis de requerimientos |  | 2018-07-23 → 2018-07-24 (+1d) | 1d → 2d |  |  | resources SM → none |
| 2 | **Objetivo 1** | 2018-07-24 → 2018-07-25 (+1d) | 2018-09-20 → 2018-09-24 (+4d) | 42.25d → 43.25d | 0d → 3d |  | resources SM → none |
| 3 | 1.2 | 2018-07-24 → 2018-07-25 (+1d) | 2018-07-24 → 2018-07-26 (+2d) | 1d → 2d | 0d → 21d |  | was named Lluvia de ideas sobre el diseño; constraint must start on 2018-07-24 → start no earlier than 2018-07-25; resources SM → none |
| 4 | 1.3 |  |  |  |  | Obtener una lista de especificaciones → none | was named Efectuar las pruebas de concepto; resources SM → none |
| 5 | 1.6 |  |  |  |  |  | was named Comprar los componentes |
| 6 | 1.4 |  | 2018-08-10 → 2018-08-03 (-7d) | 7d → 2d | 41.75d → 43.75d |  | was named Elaborar el diseño de las esclusas |
| 7 | 1.5 |  | 2018-09-06 → 2018-09-07 (+1d) | 9d → 10d | 22.75d → 18.75d |  | was named Manufacturar el diseño |
| 8 | 1.7 | 2018-09-07 → 2018-09-10 (+3d) | 2018-09-20 → 2018-09-24 (+4d) | 9d → 10d | 22.75d → 18.75d |  | was named Generar el código para la comunicación |
| 9 | **Objetivo 2** |  | 2018-09-27 → 2018-10-04 (+7d) | 34d → 39d |  |  |  |
| 10 | 2.1 |  | 2018-08-23 → 2018-08-24 (+1d) | 9d → 10d | 28d → 10d |  | was named Generar el diseño de las tolvas |
| 11 | 2.3 |  |  |  |  |  | was named Comprar los componentes |
| 12 | 2.2 |  | 2018-09-17 → 2018-09-21 (+4d) | 6d → 10d | 17d → 0d |  | was named Manufaturar el diseño de las tolvas y otros |
| 13 | 2.4 | 2018-09-18 → 2018-09-24 (+6d) | 2018-09-18 → 2018-09-25 (+7d) | 1d → 2d | 17d → 0d |  | was named Verificar el funcionamiento de todos los componentes |
| 14 | 2.5 | 2018-09-19 → 2018-09-26 (+7d) | 2018-09-25 → 2018-10-02 (+7d) |  | 17d → 0d |  | was named Ensamblar las componentes |
| 15 | 2.6 | 2018-09-26 → 2018-10-03 (+7d) | 2018-09-27 → 2018-10-04 (+7d) |  | 17d → 10d |  | was named Verificar el funcionamiento del subsistema |
| 16 | **Objetivo 3** |  | 2018-10-22 → 2018-10-18 (-4d) | 47d → 45d |  |  |  |
| 17 | 3.1 |  |  |  |  |  | was named Comprar los componentes |
| 18 | 3.2 | 2018-09-28 → 2018-10-03 (+5d) | 2018-10-01 → 2018-10-04 (+3d) |  |  | 17 → 17, 14 | was named Programar el funcionamiento de la botonera |
| 19 | 3.3 | 2018-10-02 → 2018-10-05 (+3d) | 2018-10-02 → 2018-10-09 (+7d) | 1d → 3d |  |  | was named Obtener el modelo del transporte de masas. |
| 20 | 3.4 | 2018-10-03 → 2018-10-10 (+7d) | 2018-10-03 → 2018-10-12 (+9d) | 1d → 3d |  |  | was named Diseñar el controlador |
| 21 | 3.5 | 2018-10-04 → 2018-10-15 (+11d) | 2018-10-05 → 2018-10-18 (+13d) | 2d → 4d |  |  | was named Programar la interfaz sobre la pantalla LCD |
| 23 | 4.1 | 2018-10-23 → 2018-10-19 (-4d) | 2018-10-25 → 2018-10-24 (-1d) | 3d → 4d |  | 8, 15, Construir la caja de protección → 8, 15, 21 | was named Validar el funcionamiento de cada uno de los subsistemas |
| 24 | 4.2 | 2018-10-26 → 2018-10-25 (-1d) | 2018-10-31 → 2018-10-30 (-1d) |  |  |  | was named Diseñar el experimento estadístico |
| 25 | 4.3 | 2018-11-01 → 2018-10-31 (-1d) |  | 3d → 4d |  |  | was named Ejecutar el experimento diseñado |
| 26 | 4.4 |  |  |  |  |  | was named Analizar los datos obtenidos |
| 27 | 4.5 |  |  |  |  |  | was named Elaboración del informe final |
